# 2019

Schedule from GanttProject, 2019-09-26 to 2019-12-25.
B-rain project

## Calendars

- Project calendar: Mon-Fri working; Sat-Sun off.

## Schedule

| ID | Task | Duration | Start | Finish | Predecessors |
| --- | --- | --- | --- | --- | --- |
| 1 | Prototype v 0.1 | 60d | 2019-09-26 | 2019-12-18 |  |
| 2 | Marketing research | 10d | 2019-09-26 | 2019-10-09 |  |
| 3 | Accelerators research | 10d | 2019-09-26 | 2019-10-09 |  |
| 4 | Invitations | 5d | 2019-09-26 | 2019-10-02 |  |
| 5 | Visa processing | 60d | 2019-10-03 | 2019-12-25 | 4 |
| 6 | Business trip plan | 2d | 2019-10-10 | 2019-10-11 | 2, 3 |
